# Diagrama de Gantt

Schedule from MS Project, 2024-10-23 to 2024-12-18, A marks actual dates.

## Calendars

- Estándar: Mon-Fri 09:00-13:00, 15:00-19:00; Sat-Sun off.

## Resources

| Resource |
| --- |
| Kendyr |

## Schedule

| ID | WBS | Task | Duration | Start | Finish | Predecessors | Complete | Remaining | Total slack | Free slack | Resources | Work | Actual work |
| --- | --- | --- | --- | --- | --- | --- | --- | --- | --- | --- | --- | --- | --- |
| 1 | 1 | **Sistema de Compra y Venta** | 40.1d | 2024-10-23 09:00 A | 2024-12-18 09:48 |  | 6% | 37.66d |  |  |  | 152.8h | 18.8h |
| 2 | 1.1 | **Modelo** | 6.7d | 2024-10-23 09:00 A | 2024-10-31 16:36 |  | 35% | 4.35d | 1.5d |  |  | 53.6h | 18.8h |
| 3 | 1.1.1 | **Usuario** | 1d | 2024-10-23 09:00 A | 2024-10-23 19:00 |  | 50% | 0.5d | 0.25d |  |  | 8h | 4h |
| 4 | 1.1.1.1 | Login | 0.2d | 2024-10-23 09:00 A | 2024-10-23 10:36 |  | 50% | 0.1d | 0.15d | 0d | Kendyr | 1.6h | 0.8h |
| 5 | 1.1.1.2 | Cambio de contraseña | 0.3d | 2024-10-23 10:36 A | 2024-10-23 13:00 | 4 | 50% | 0.15d | 0.25d | 0d | Kendyr | 2.4h | 1.2h |
| 6 | 1.1.1.3 | CRUD | 0.5d | 2024-10-23 15:00 A | 2024-10-23 19:00 | 5 | 50% | 0.25d | 0.25d | 0d | Kendyr | 4h | 2h |
| 7 | 1.1.2 | **Categoria** | 0.5d | 2024-10-24 09:00 A | 2024-10-24 13:00 |  | 50% | 0.25d | 0.25d |  |  | 4h | 2h |
| 8 | 1.1.2.1 | CRUD | 0.5d | 2024-10-24 09:00 A | 2024-10-24 13:00 | 6 | 50% | 0.25d | 0.25d | 0d | Kendyr | 4h | 2h |
| 9 | 1.1.3 | **Producto** | 0.5d | 2024-10-24 15:00 A | 2024-10-24 19:00 |  | 50% | 0.25d | 0.25d |  |  | 4h | 2h |
| 10 | 1.1.3.1 | CRUD | 0.5d | 2024-10-24 15:00 A | 2024-10-24 19:00 | 8 | 50% | 0.25d | 0.25d | 0d | Kendyr | 4h | 2h |
| 11 | 1.1.4 | **Moneda** | 0.5d | 2024-10-25 09:00 A | 2024-10-25 13:00 |  | 50% | 0.25d | 0.25d |  |  | 4h | 2h |
| 12 | 1.1.4.1 | CRUD | 0.5d | 2024-10-25 09:00 A | 2024-10-25 13:00 | 10 | 50% | 0.25d | 0.25d | 0d | Kendyr | 4h | 2h |
| 13 | 1.1.5 | **Unidad de medida** | 0.5d | 2024-10-25 15:00 A | 2024-10-25 19:00 |  | 50% | 0.25d | 0.25d |  |  | 4h | 2h |
| 14 | 1.1.5.1 | CRUD | 0.5d | 2024-10-25 15:00 A | 2024-10-25 19:00 | 12 | 50% | 0.25d | 0.25d | 0d | Kendyr | 4h | 2h |
| 15 | 1.1.6 | **Cliente** | 0.5d | 2024-10-28 09:00 A | 2024-10-28 13:00 |  | 50% | 0.25d | 0.25d |  |  | 4h | 2h |
| 16 | 1.1.6.1 | CRUD | 0.5d | 2024-10-28 09:00 A | 2024-10-28 13:00 | 14 | 50% | 0.25d | 0.25d | 0d | Kendyr | 4h | 2h |
| 17 | 1.1.7 | **Proveedor** | 0.5d | 2024-10-28 15:00 A | 2024-10-28 19:00 |  | 50% | 0.25d | 0.1d |  |  | 4h | 2h |
| 18 | 1.1.7.1 | CRUD | 0.5d | 2024-10-28 15:00 A | 2024-10-28 19:00 | 16 | 50% | 0.25d | 0.1d | 0d | Kendyr | 4h | 2h |
| 19 | 1.1.8 | **Empresa** | 0.2d | 2024-10-29 09:00 A | 2024-10-29 10:36 |  | 50% | 0.1d | 0.1d |  |  | 1.6h | 0.8h |
| 20 | 1.1.8.1 | CRUD | 0.2d | 2024-10-29 09:00 A | 2024-10-29 10:36 | 18 | 50% | 0.1d | 0.1d | 0d | Kendyr | 1.6h | 0.8h |
| 21 | 1.1.9 | **Sucursal** | 0.2d | 2024-10-29 10:36 A | 2024-10-29 12:12 |  | 50% | 0.1d | 0.15d |  |  | 1.6h | 0.8h |
| 22 | 1.1.9.1 | CRUD | 0.2d | 2024-10-29 10:36 A | 2024-10-29 12:12 | 20 | 50% | 0.1d | 0.15d | 0d | Kendyr | 1.6h | 0.8h |
| 23 | 1.1.10 | **Compra** | 1d | 2024-10-29 12:12 | 2024-10-30 12:12 |  |  |  | 0.15d |  |  | 8h |  |
| 24 | 1.1.10.1 | CRUD | 0.2d | 2024-10-29 12:12 | 2024-10-29 15:48 | 22 |  |  | 0.15d | 0d | Kendyr | 1.6h |  |
| 25 | 1.1.10.2 | Agregar Producto | 0.3d | 2024-10-29 15:48 | 2024-10-29 18:12 | 24 |  |  | 0.15d | 0d | Kendyr | 2.4h |  |
| 26 | 1.1.10.3 | Listar Detalle de Compra | 0.5d | 2024-10-29 18:12 | 2024-10-30 12:12 | 25 |  |  | 0.15d | 0d | Kendyr | 4h |  |

| ID | WBS | Task | Duration | Start | Finish | Predecessors | Complete | Remaining | Total slack | Free slack | Resources | Work | Actual work |
| --- | --- | --- | --- | --- | --- | --- | --- | --- | --- | --- | --- | --- | --- |
| 27 | 1.1.11 | **Venta** | 1d | 2024-10-30 12:12 | 2024-10-31 12:12 |  |  |  | 0.15d |  |  | 8h |  |
| 28 | 1.1.11.1 | CRUD | 0.2d | 2024-10-30 12:12 | 2024-10-30 15:48 | 26 |  |  | 0.15d | 0d | Kendyr | 1.6h |  |
| 29 | 1.1.11.2 | Descontar Producto | 0.3d | 2024-10-30 15:48 | 2024-10-30 18:12 | 28 |  |  | 0.15d | 0d | Kendyr | 2.4h |  |
| 30 | 1.1.11.3 | Listar Detalle de Venta | 0.5d | 2024-10-30 18:12 | 2024-10-31 12:12 | 29 |  |  | 0.15d | 0d | Kendyr | 4h |  |
| 31 | 1.1.12 | **Rol** | 0.3d | 2024-10-31 12:12 A | 2024-10-31 16:36 |  | 50% | 0.15d | 1.5d |  |  | 2.4h | 1.2h |
| 32 | 1.1.12.1 | CRUD | 0.3d | 2024-10-31 12:12 A | 2024-10-31 16:36 | 30 | 50% | 0.15d | 1.5d | 0d | Kendyr | 2.4h | 1.2h |
| 33 | 1.2 | **Controlador** | 6.4d | 2024-10-31 16:36 | 2024-11-11 09:48 |  |  |  | 1.5d |  |  | 51.2h |  |
| 34 | 1.2.1 | Usuario | 0.5d | 2024-10-31 16:36 | 2024-11-01 10:36 | 32 |  |  | 1.5d | 0d | Kendyr | 4h |  |
| 35 | 1.2.2 | Categoria | 0.5d | 2024-11-01 10:36 | 2024-11-01 16:36 | 34 |  |  | 1.5d | 0d | Kendyr | 4h |  |
| 36 | 1.2.3 | Producto | 0.5d | 2024-11-01 16:36 | 2024-11-04 10:36 | 35 |  |  | 1.5d | 0d | Kendyr | 4h |  |
| 37 | 1.2.4 | Moneda | 0.5d | 2024-11-04 10:36 | 2024-11-04 16:36 | 36 |  |  | 1.5d | 0d | Kendyr | 4h |  |
| 38 | 1.2.5 | Cliente | 0.2d | 2024-11-04 16:36 | 2024-11-04 18:12 | 37 |  |  | 1.5d | 0d | Kendyr | 1.6h |  |
| 39 | 1.2.6 | Proveedor | 0.5d | 2024-11-04 18:12 | 2024-11-05 12:12 | 38 |  |  | 1.5d | 0d | Kendyr | 4h |  |
| 40 | 1.2.7 | Usuario | 0.5d | 2024-11-05 12:12 | 2024-11-05 18:12 | 39 |  |  | 1.5d | 0d | Kendyr | 4h |  |
| 41 | 1.2.8 | Empresa | 0.5d | 2024-11-05 18:12 | 2024-11-06 12:12 | 40 |  |  | 1.5d | 0d | Kendyr | 4h |  |
| 42 | 1.2.9 | Sucursal | 0.2d | 2024-11-06 12:12 | 2024-11-06 15:48 | 41 |  |  | 1.5d | 0d | Kendyr | 1.6h |  |
| 43 | 1.2.10 | Compra | 1d | 2024-11-06 15:48 | 2024-11-07 15:48 | 42 |  |  | 1.5d | 0d | Kendyr | 8h |  |
| 44 | 1.2.11 | Venta | 1d | 2024-11-07 15:48 | 2024-11-08 15:48 | 43 |  |  | 1.5d | 0d | Kendyr | 8h |  |
| 45 | 1.2.12 | Rol | 0.5d | 2024-11-08 15:48 | 2024-11-11 09:48 | 44 |  |  | 1.5d | 0d | Kendyr | 4h |  |
| 46 | 1.3 | **Vistas** | 19.5d | 2024-11-11 09:48 | 2024-12-06 15:48 |  |  |  | 1.5d |  |  |  |  |
| 47 | 1.3.1 | Vetana de Acceso | 0.5d | 2024-11-11 09:48 | 2024-11-11 15:48 | 45 |  |  | 1.5d | 0d |  |  |  |
| 48 | 1.3.2 | Ventana Home | 0.5d | 2024-11-11 15:48 | 2024-11-12 09:48 | 47 |  |  | 1.5d | 0d |  |  |  |
| 49 | 1.3.3 | Mant. Categoria | 0.5d | 2024-11-12 09:48 | 2024-11-12 15:48 | 48 |  |  | 1.5d | 0d |  |  |  |
| 50 | 1.3.4 | Mant. Producto | 1d | 2024-11-12 15:48 | 2024-11-13 15:48 | 49 |  |  | 1.5d | 0d |  |  |  |
| 51 | 1.3.5 | Mant. Moneda | 0.5d | 2024-11-13 15:48 | 2024-11-14 09:48 | 50 |  |  | 1.5d | 0d |  |  |  |
| 52 | 1.3.6 | Mant. Unidad de Medida | 0.5d | 2024-11-14 09:48 | 2024-11-14 15:48 | 51 |  |  | 1.5d | 0d |  |  |  |
| 53 | 1.3.7 | Mant. Cliente | 1d | 2024-11-14 15:48 | 2024-11-15 15:48 | 52 |  |  | 1.5d | 0d |  |  |  |
| 54 | 1.3.8 | Mant. Proveedor | 1d | 2024-11-15 15:48 | 2024-11-18 15:48 | 53 |  |  | 1.5d | 0d |  |  |  |
| 55 | 1.3.9 | Mant. Usuario | 1.5d | 2024-11-18 15:48 | 2024-11-20 09:48 | 54 |  |  | 1.5d | 0d |  |  |  |
| 56 | 1.3.10 | Mant. Empresa | 0.5d | 2024-11-20 09:48 | 2024-11-20 15:48 | 55 |  |  | 1.5d | 0d |  |  |  |
| 57 | 1.3.11 | Proceso de Compra | 3d | 2024-11-20 15:48 | 2024-11-25 15:48 | 56 |  |  | 1.5d | 0d |  |  |  |
| 58 | 1.3.12 | Vista de Compra | 1d | 2024-11-25 15:48 | 2024-11-26 15:48 | 57 |  |  | 1.5d | 0d |  |  |  |
| 59 | 1.3.13 | Proceso de Venta | 3d | 2024-11-26 15:48 | 2024-11-29 15:48 | 58 |  |  | 1.5d | 0d |  |  |  |
| 60 | 1.3.14 | Vista de Venta | 1d | 2024-11-29 15:48 | 2024-12-02 15:48 | 59 |  |  | 1.5d | 0d |  |  |  |
| 61 | 1.3.15 | Listado de Venta | 1.5d | 2024-12-02 15:48 | 2024-12-04 09:48 | 60 |  |  | 1.5d | 0d |  |  |  |
| 62 | 1.3.16 | Listado de Compra | 1.5d | 2024-12-04 09:48 | 2024-12-05 15:48 | 61 |  |  | 1.5d | 0d |  |  |  |
| 63 | 1.3.17 | Mant. Sucursal | 0.5d | 2024-12-05 15:48 | 2024-12-06 09:48 | 62 |  |  | 1.5d | 0d |  |  |  |
| 64 | 1.3.18 | Mant. Rol | 0.5d | 2024-12-06 09:48 | 2024-12-06 15:48 | 63 |  |  | 1.5d | 0d |  |  |  |
| 65 | 1.4 | Pruebas | 4d | 2024-12-06 15:48 | 2024-12-12 15:48 | 64 |  |  | 1.5d | 0d | Kendyr | 32h |  |
| 66 | 1.5 | Cambios o Correcciones | 2d | 2024-12-12 15:48 | 2024-12-16 15:48 | 65 |  |  | 1.5d |  | Kendyr | 16h |  |
